# 国家消防救援局项目

Schedule from a web Gantt chart, 2024-04-08 to 2024-04-08.
Saturdays and Sundays are off

## Schedule

| ID | WBS | Task | Duration | Start | Finish | inPeople |
| --- | --- | --- | --- | --- | --- | --- |
| 2 | 1 | 项目启动 | 1d | 2024-04-08 | 2024-04-08 | 谷先 |
